# D4H_Plan

Schedule from MS Project, 2019-08-31 to 2020-01-30, status date 2019-10-22, A marks actual dates.

## Calendars

- Standard: Mon-Fri 20:00-22:00; Sat-Sun 09:00-12:00, 20:00-22:00.

## Resources

| Resource |
| --- |
| Đức Dương |
| Diệu Hoa |
| Trần Hòa |
| Thanh Huyền |
| Thanh Hương |
| Minh Nhật |

## Schedule

| ID | WBS | Task | Type | Duration | Start | Finish | Predecessors | Complete | Remaining | Total slack | Free slack | Constraint | Deadline | Resources | Work | Actual work |
| --- | --- | --- | --- | --- | --- | --- | --- | --- | --- | --- | --- | --- | --- | --- | --- | --- |
| 1 | 1 | **Project Charter** |  | 4d | 2019-08-31 A | 2019-09-10 |  | 25% | 3d | 0d |  |  |  |  | 33h | 4h |
| 2 | 1.1 | Hoàn thiện Project charter lần 1 | manual | 9h | 2019-08-31 A | 2019-09-01 |  | 22% | 7h |  |  |  | 2019-09-09 | Thanh Huyền | 27h | 2h |
| 3 | 1.2 | Hoàn thiện Project charter lần 2 | manual | 3h | 2019-09-10 A | 2019-09-10 |  | 33% | 2h |  |  |  | 2019-09-15 | Thanh Hương; Thanh Huyền | 6h | 2h |
| 4 | 2 | **SRS** |  | 67h | 2019-08-31 A | 2019-09-22 |  | 41% | 39.83h |  |  |  |  |  | 360.37h | 62h |
| 5 | 2.1 | Tổng hợp chức năng và phân chia SRS | manual | 3h | 2019-08-31 A | 2019-08-31 A |  | 100% |  |  |  |  |  | Thanh Huyền | 3h | 3h |
| 6 | 2.2 | Phần 1 | manual | 9h | 2019-08-31 A | 2019-09-01 |  | 33% | 6h |  |  |  |  | Trần Hòa | 26h | 3h |
| 7 | 2.3 | Phần 2 | manual | 9h | 2019-08-31 A | 2019-09-01 |  | 11% | 8h |  |  |  |  | Diệu Hoa; Đức Dương | 55h | 2h |
| 8 | 2.4 | Phần 3 | manual | 9h | 2019-08-31 A | 2019-09-01 |  | 39% | 5.5h |  |  |  |  | Thanh Hương; Thanh Huyền | 55h | 7h |
| 9 | 2.5 | Phần 4 | manual | 9h | 2019-08-31 A | 2019-09-01 |  | 44% | 5h |  |  |  |  | Đức Dương; Minh Nhật | 62.37h | 20h |
| 10 | 2.6 | Phần 5 | manual | 9h | 2019-08-31 A | 2019-09-01 |  | 44% | 5h |  |  |  |  | Diệu Hoa | 28h | 5h |
| 11 | 2.7 | Review | manual | 4h | 2019-09-05 A | 2019-09-05 A |  | 100% |  |  |  |  |  | Thanh Huyền | 4h | 4h |
| 12 | 2.8 | Tổng hợp doc | manual | 3h | 2019-09-08 A | 2019-09-08 |  | 67% | 1h |  |  |  |  | Minh Nhật | 3h | 2h |
| 13 | 2.9 | Chỉnh sửa lần 1 | manual | 12h | 2019-09-15 A | 2019-09-18 |  | 22% | 9.33h |  |  |  |  | Diệu Hoa; Đức Dương; Minh Nhật; Thanh Hương; Thanh Huyền; Trần Hòa | 124h | 16h |
| 14 | 3 | **Project Plan** |  | 12h | 2019-10-22 A | 2019-10-22 |  | 75% | 3h |  |  |  |  |  | 12h | 9h |
| 15 | 3.1 | Tạo pj plan | manual | 4h | 2019-10-22 A | 2019-10-22 A |  | 100% |  |  |  |  |  | Thanh Huyền | 4h | 4h |
| 16 | 3.2 | Chỉnh sửa pj plan lần 1 | manual | 4h | 2019-10-22 A | 2019-10-22 |  | 50% | 2h |  |  |  |  | Trần Hòa | 4h | 2h |
| 17 | 3.3 | Chỉnh sửa pj lần 2 | manual | 4h | 2019-10-23 A | 2019-10-23 |  | 75% | 1h |  |  |  |  | Thanh Huyền | 4h | 3h |
| 18 | 4 | Design website |  | 9h | 2019-10-12 A | 2019-10-14 |  | 78% | 2h | 33.88d | 24.12d | start no earlier than 2019-10-12 |  | Trần Hòa | 6h | 4h |
| 19 | 5 | **Set up môi trường phát triển** |  | 24h | 2019-09-16 A | 2019-09-20 |  | 18% | 19.75h |  |  |  |  |  | 46h | 8h |
| 20 | 5.1 | Tạo kho Git | manual | 12h | 2019-09-16 A | 2019-09-16 |  | 8% | 11h |  |  |  |  | Thanh Hương; Thanh Huyền | 24h | 2h |
| 21 | 5.2 | Thêm các thành viên | manual | 2h | 2019-09-16 A | 2019-09-16 |  | 13% | 1.75h |  |  |  |  | Minh Nhật; Thanh Hương | 4h | 0.5h |
| 22 | 5.3 | Add reviewer | manual | 2h | 2019-09-16 A | 2019-09-16 |  | 25% | 1.5h |  |  |  |  | Diệu Hoa | 2h | 0.5h |
| 23 | 5.4 | Cài đặt phần mềm cần thiết | manual | 8h | 2019-09-20 A | 2019-09-20 |  | 31% | 5.5h |  |  |  |  | Đức Dương; Minh Nhật | 16h | 5h |
| 24 | 6 | **Xác thực danh tính** |  | 5.12d | 2019-12-22 | 2020-01-05 |  |  |  | 8.88d |  |  |  |  | 22h |  |
| 25 | 6.1 | Tạo chức năng Log in |  | 12h | 2019-12-22 | 2019-12-26 | 19, 18 |  |  | 9.88d | 1d | start no earlier than 2019-12-22 |  | Thanh Huyền | 6h |  |
| 26 | 6.2 | Tạo chức năng Đăng kí |  | 13h | 2019-12-24 | 2019-12-28 | 19, 18 |  |  | 8.88d | 0d | start no earlier than 2019-12-24 |  | Minh Nhật | 7h |  |
| 27 | 6.3 | Tạo chức năng Log out |  | 11h | 2019-12-29 | 2020-01-01 | 25, 26 |  |  | 8.88d | 0d |  |  | Đức Dương | 5h |  |
| 28 | 6.4 | Test Xác thực danh tính |  | 10h | 2020-01-02 | 2020-01-05 | 27 |  |  | 8.88d |  |  |  | Trần Hòa | 4h |  |

| ID | WBS | Task | Duration | Start | Finish | Predecessors | Complete | Remaining | Total slack | Free slack | Constraint | Resources | Work | Actual work |
| --- | --- | --- | --- | --- | --- | --- | --- | --- | --- | --- | --- | --- | --- | --- |
| 29 | 7 | **Đăng bài bán** | 3.25d | 2019-10-22 A | 2019-10-31 |  | 78% | 0.73d | 21.88d |  |  |  | 35h | 25h |
| 30 | 7.1 | Tạo chức năng Đăng bài bán | 20h | 2019-10-22 A | 2019-10-28 |  | 81% | 3.85h | 22.38d | 0d | start no earlier than 2019-10-22 | Minh Nhật; Đức Dương | 29h | 21h |
| 31 | 7.2 | Test chức năng Đăng bài bán | 6h | 2019-10-29 A | 2019-10-31 | 30 | 67% | 2h | 21.88d | 3.38d |  | Diệu Hoa | 6h | 4h |
| 32 | 8 | **Tìm kiếm** | 3.62d | 2019-11-10 | 2019-11-20 |  |  |  | 25.38d |  |  |  | 28h |  |
| 33 | 8.1 | Tạo chức năng Tìm kiếm | 18h | 2019-11-10 | 2019-11-16 | 31 |  |  | 26.25d | 0.88d | finish no earlier than 2019-11-16 | Trần Hòa; Thanh Huyền | 24h |  |
| 34 | 8.2 | Test chức năng Tìm kiếm | 4h | 2019-11-18 | 2019-11-20 | 33 |  |  | 25.38d |  | finish no earlier than 2019-11-20 | Diệu Hoa | 4h |  |
| 35 | 9 | **Thông báo** | 2.25d | 2019-11-01 | 2019-11-06 |  |  |  | 20.12d |  |  |  | 12h |  |
| 36 | 9.1 | Tạo chức năng Thông báo | 14h | 2019-11-01 | 2019-11-04 |  |  |  | 20.12d | 0d | start no earlier than 2019-11-01 | Trần Hòa | 8h |  |
| 37 | 9.2 | Test chức năng Thông báo | 4h | 2019-11-05 | 2019-11-06 | 36 |  |  | 30.12d |  |  | Thanh Hương | 4h |  |
| 38 | 10 | **Chat** | 3.12d | 2019-11-15 | 2019-11-23 |  |  |  | 24.25d |  |  |  | 12h |  |
| 39 | 10.1 | Tạo chức năng Chat | 15h | 2019-11-15 | 2019-11-19 | 30FS+46h |  |  | 24.75d | 0.5d | finish no earlier than 2019-11-17 | Thanh Huyền | 9h |  |
| 40 | 10.2 | Test chức năng Chat | 6h | 2019-11-21 | 2019-11-23 | 39 |  |  | 24.25d |  | finish no earlier than 2019-11-23 | Thanh Huyền | 3h |  |
| 41 | 11 | **Quản lý bài đăng** | 3.25d | 2019-12-24 | 2020-01-02 |  |  |  | 9.88d |  |  |  | 14h |  |
| 42 | 11.1 | Tạo chức năng Quản lý bài đăng | 15h | 2019-12-24 | 2019-12-29 | 30 |  |  | 9.88d | 0d | start no earlier than 2019-12-24 | Trần Hòa | 9h |  |
| 43 | 11.2 | Test chức năng quản lý bài đăng | 11h | 2019-12-29 | 2020-01-02 | 42 |  |  | 9.88d |  | start no earlier than 2019-11-02 | Trần Hòa | 5h |  |
| 44 | 12 | **Forum** | 5.62d | 2019-12-04 | 2019-12-20 |  |  |  | 14.62d |  |  |  | 51h |  |
| 45 | 12.1 | Tạo chức năng Forum | 33h | 2019-12-04 | 2019-12-15 | 31 |  |  | 14.62d | 0d | finish no earlier than 2019-12-15 | Minh Nhật; Đức Dương | 42h |  |
| 46 | 12.2 | Test chức năng Forum | 12h | 2019-12-15 | 2019-12-20 | 45 |  |  | 14.62d |  | start no earlier than 2019-11-17 | Trần Hòa; Minh Nhật | 9h |  |
| 47 | 13 | **More** | 3.25d | 2019-12-28 | 2020-01-05 |  |  |  | 1.25d |  |  |  | 19h |  |
| 48 | 13.1 | Tạo chức năng More | 20h | 2019-12-28 | 2020-01-04 | 36, 31 |  |  | 1.25d | 0d | start no earlier than 2019-12-28 | Minh Nhật | 10h |  |
| 49 | 13.2 | Test chức năng More | 6h | 2020-01-04 | 2020-01-05 | 48 |  |  | 1.25d |  | start no earlier than 2020-01-04 | Minh Nhật; Thanh Huyền | 9h |  |
| 50 | 14 | Test tổng thể | 16h | 2020-01-05 | 2020-01-11 |  |  |  | 7d |  | start no earlier than 2020-01-05 | Thanh Huyền; Trần Hòa; Minh Nhật | 18h |  |
| 51 | 15 | Publish | 18h | 2020-01-10 | 2020-01-16 | 49 |  |  | 0d |  | start no earlier than 2020-01-10 | Thanh Huyền; Đức Dương | 18h |  |
| 52 | 16 | Marketing | 40h | 2020-01-16 | 2020-01-30 | 51 |  |  | 0d |  | start no earlier than 2020-01-13 | Đức Dương; Trần Hòa | 56h |  |

Notes:
- 29: Hoŕn thŕnh đầu tięn vŕ release vŕo 30/10
- 32: release 30/11
- 44: release 30/12
